# QLDA

Schedule from MS Project, 2020-01-01 to 2020-02-28, costs in $.

## Calendars

- Standard: Mon-Fri 08:00-12:00, 13:00-17:00; Sat-Sun off.

## Resources

| Resource | Rate |
| --- | --- |
| Front-end Dev | 20 |
| Designer | 20 |
| Tester | 20 |
| Project Manager | 60 |
| BA | 25 |
| Back-end Dev | 20 |

## Schedule

| ID | WBS | Task | Duration | Start | Finish | Predecessors | Total slack | Free slack | Resources | Work | Cost |
| --- | --- | --- | --- | --- | --- | --- | --- | --- | --- | --- | --- |
| 1 | 1 | **Xây dựng website xem phim và dịch vụ hosting** | 43d | 2020-01-01 | 2020-02-28 |  | 0d |  |  | 1472h | 29,840 |
| 2 | 1.1 | **Xây dựng website xem phim** | 43d | 2020-01-01 | 2020-02-28 |  | 0d |  |  | 1384h | 27,800 |
| 3 | 1.1.1 | Lấy yêu cầu khách hàng | 3d | 2020-01-01 | 2020-01-03 |  | 3d | 0d | BA | 24h | 600 |
| 4 | 1.1.2 | **Phân tích và thiết kế** | 27d | 2020-01-06 | 2020-02-11 | 3 | 3d |  |  | 312h | 6,240 |
| 5 | 1.1.2.1 | **Phân tích và thiết kế Front-end Site** | 16d | 2020-01-08 | 2020-01-29 |  | 3d |  |  | 208h | 4,160 |
| 6 | 1.1.2.1.1 | **Phân tích, thiết kế giao diện** | 16d | 2020-01-08 | 2020-01-29 | 27 | 1d |  |  | 96h | 1,920 |
| 7 | 1.1.2.1.1.1 | Thiết kế giao diện trang chủ | 3d | 2020-01-08 | 2020-01-10 |  | 8d | 0d | Designer | 24h | 480 |
| 8 | 1.1.2.1.1.2 | Thiết kế giao diện trang xem phim | 3d | 2020-01-13 | 2020-01-15 |  | 0d |  | Designer | 24h | 480 |
| 9 | 1.1.2.1.1.3 | Thiết kế giao diện trang chi tiết phim | 2d | 2020-01-20 | 2020-01-21 |  | 1d | 0d | Designer | 16h | 320 |
| 10 | 1.1.2.1.1.4 | Thiết kế giao diện trang tìm kiếm | 1d | 2020-01-22 | 2020-01-22 |  | 4d | 0d | Designer | 8h | 160 |
| 11 | 1.1.2.1.1.5 | Thiết kế giao diện tương thích với các thiết bị | 3d | 2020-01-27 | 2020-01-29 | 7, 8, 9 | 1d |  | Designer | 24h | 480 |
| 12 | 1.1.2.1.2 | **Phân tích, thiết kế chức năng** | 8d | 2020-01-08 | 2020-01-17 | 27 | 10d |  |  | 112h | 2,240 |
| 13 | 1.1.2.1.2.1 | Phân tích, thiết kế chức năng xem phim | 2d | 2020-01-13 | 2020-01-14 |  | 18d | 0d | Back-end Dev [200%] | 32h | 640 |
| 14 | 1.1.2.1.2.2 | Phân tích thiết kế chức năng tìm kiếm | 2d | 2020-01-16 | 2020-01-17 |  | 16d | 0d | Back-end Dev | 16h | 320 |
| 15 | 1.1.2.1.2.3 | Phân tích, thiết kế chức năng đăng nhập | 1d | 2020-01-17 | 2020-01-17 |  | 11d | 0d | Back-end Dev | 8h | 160 |
| 16 | 1.1.2.1.2.4 | Phân tích thiết kế chức năng bình luận | 1d | 2020-01-17 | 2020-01-17 |  | 9d | 0d | Back-end Dev | 8h | 160 |
| 17 | 1.1.2.1.2.5 | Phân tích, thiết kế chức năng theo dõi thói quen người dùng | 3d | 2020-01-08 | 2020-01-10 |  | 10d | 2d | Back-end Dev [200%] | 48h | 960 |
| 18 | 1.1.2.2 | **Phân tích và thiết kế Back-end Site** | 8d | 2020-01-15 | 2020-01-24 |  | 11d |  |  | 64h | 1,280 |
| 19 | 1.1.2.2.1 | **Phân tích, thiết kế giao diện** | 7d | 2020-01-16 | 2020-01-24 | 27 | 7d |  |  | 32h | 640 |
| 20 | 1.1.2.2.1.1 | Thiết kế giao diện trang quản trị phim | 1d | 2020-01-16 | 2020-01-16 |  | 10d | 0d | Designer | 8h | 160 |
| 21 | 1.1.2.2.1.2 | Thiết kế giao diện trang quản trị quản lý | 1d | 2020-01-17 | 2020-01-17 |  | 9d | 0d | Designer | 8h | 160 |
| 22 | 1.1.2.2.1.3 | Thiết kế giao diện tương thích với thiết bị | 2d | 2020-01-23 | 2020-01-24 | 20, 21 | 7d | 0d | Designer | 16h | 320 |
| 23 | 1.1.2.2.2 | **Phân tích, thiết kế chức năng** | 2d | 2020-01-15 | 2020-01-16 | 27 | 16d |  |  | 32h | 640 |
| 24 | 1.1.2.2.2.1 | Phân tích, thiết kế chức năng quản trị phim | 2d | 2020-01-15 | 2020-01-16 |  | 20d | 0d | Back-end Dev | 16h | 320 |
| 25 | 1.1.2.2.2.2 | Phân tích, thiết kế chức năng quản trị quản lý | 2d | 2020-01-15 | 2020-01-16 |  | 16d | 0d | Back-end Dev | 16h | 320 |

| ID | WBS | Task | Duration | Start | Finish | Predecessors | Total slack | Free slack | Resources | Work | Cost |
| --- | --- | --- | --- | --- | --- | --- | --- | --- | --- | --- | --- |
| 26 | 1.1.2.3 | **Phân tích và thiết kế bảo mật** | 27d | 2020-01-06 | 2020-02-11 |  | 3d |  |  | 40h | 800 |
| 27 | 1.1.2.3.1 | Phân tích, thiết kế cơ sở dữ liệu | 2d | 2020-01-06 | 2020-01-07 |  | 3d | 0d | Back-end Dev | 16h | 320 |
| 28 | 1.1.2.3.2 | **Phân tích, thiết kế phân quyền** | 2d | 2020-02-10 | 2020-02-11 | 27 | 13d |  |  | 16h | 320 |
| 29 | 1.1.2.3.2.1 | Phân tích, thiết kế quyền trên cơ sở dữ liệu | 1d | 2020-02-10 | 2020-02-10 |  | 14d |  | Back-end Dev | 8h | 160 |
| 30 | 1.1.2.3.2.2 | Phân tích, thiết kế nhóm quyền trên cơ sỡ dữ liệu | 1d | 2020-02-11 | 2020-02-11 |  | 13d |  | Back-end Dev | 8h | 160 |
| 31 | 1.1.2.3.3 | Phân tích, thiết kế sao lưu và phục hồi | 1d | 2020-02-11 | 2020-02-11 | 27 | 13d |  | Back-end Dev | 8h | 160 |
| 32 | 1.1.3 | **Xây dựng** | 29d | 2020-01-13 | 2020-02-20 |  | 1d |  |  | 536h | 10,720 |
| 33 | 1.1.3.1 | **Xây dựng Front-end Site** | 29d | 2020-01-13 | 2020-02-20 |  | 1d |  |  | 320h | 6,400 |
| 34 | 1.1.3.1.1 | **Xây dựng giao diện** | 29d | 2020-01-13 | 2020-02-20 |  | 0d |  |  | 168h | 3,360 |
| 35 | 1.1.3.1.1.1 | Xây dựng giao diện trang chủ | 4d | 2020-01-13 | 2020-01-16 | 7 | 10d | 0d | Front-end Dev | 32h | 640 |
| 36 | 1.1.3.1.1.2 | Xây dựng giao diện trang xem phim | 4d | 2020-01-27 | 2020-01-30 | 8 | 0d |  | Front-end Dev | 32h | 640 |
| 37 | 1.1.3.1.1.3 | Xây dựng giao diện trang chi tiết phim | 2d | 2020-01-24 | 2020-01-27 | 9 | 3d | 0d | Front-end Dev | 16h | 320 |
| 38 | 1.1.3.1.1.4 | Xây dựng giao diện trang tìm kiếm | 1d | 2020-01-24 | 2020-01-24 | 10 | 4d | 0d | Front-end Dev | 8h | 160 |
| 39 | 1.1.3.1.1.5 | Xây dựng giao diện tương thích với thiết bị | 5d | 2020-02-14 | 2020-02-20 | 11, 35, 36, 37, 38 | 0d |  | Front-end Dev [200%] | 80h | 1,600 |
| 40 | 1.1.3.1.2 | **Xây dựng chức năng** | 16d | 2020-01-20 | 2020-02-10 | 55 | 9d |  |  | 152h | 3,040 |
| 41 | 1.1.3.1.2.1 | Xây dựng chức năng xem phim | 5d | 2020-01-20 | 2020-01-24 | 13 | 19d | 0d | Back-end Dev | 40h | 800 |
| 42 | 1.1.3.1.2.2 | Xây dựng chức năng tìm kiếm | 2d | 2020-01-28 | 2020-01-29 | 14 | 16d | 0d | Back-end Dev | 16h | 320 |
| 43 | 1.1.3.1.2.3 | Xây dựng chức năng đăng nhập | 1d | 2020-02-06 | 2020-02-06 | 15 | 11d | 0d | Back-end Dev | 8h | 160 |
| 44 | 1.1.3.1.2.4 | Xây dựng chức năng bình luận | 1d | 2020-02-10 | 2020-02-10 | 16 | 9d | 0d | Back-end Dev | 8h | 160 |
| 45 | 1.1.3.1.2.5 | Xây dựng chức năng theo dõi thói quen người dùng | 5d | 2020-02-03 | 2020-02-07 | 17 | 9d | 0d | Back-end Dev [200%] | 80h | 1,600 |
| 46 | 1.1.3.2 | **Xây dựng Back-end Site** | 16d | 2020-01-17 | 2020-02-07 |  | 8d |  |  | 160h | 3,200 |
| 47 | 1.1.3.2.1 | **Xây dựng giao diện** | 16d | 2020-01-17 | 2020-02-07 |  | 7d |  |  | 112h | 2,240 |
| 48 | 1.1.3.2.1.1 | Xây dựng giao diện trang quản trị phim | 3d | 2020-01-17 | 2020-01-21 | 20 | 10d | 0d | Front-end Dev | 24h | 480 |
| 49 | 1.1.3.2.1.2 | Xây dựng giao diện trang quản trị quản lý | 3d | 2020-01-20 | 2020-01-22 | 21 | 9d | 0d | Front-end Dev | 24h | 480 |
| 50 | 1.1.3.2.1.3 | Xây dựng giao diện tương thích với thiết bị | 4d | 2020-02-04 | 2020-02-07 | 22, 48, 49 | 7d | 0d | Front-end Dev [200%] | 64h | 1,280 |

| ID | WBS | Task | Duration | Start | Finish | Predecessors | Total slack | Free slack | Resources | Work | Cost |
| --- | --- | --- | --- | --- | --- | --- | --- | --- | --- | --- | --- |
| 51 | 1.1.3.2.2 | **Xây dựng chức năng** | 3d | 2020-01-20 | 2020-01-22 | 55 | 17d |  |  | 48h | 960 |
| 52 | 1.1.3.2.2.1 | Xây dựng chức năng quản trị phim | 3d | 2020-01-20 | 2020-01-22 | 24 | 20d | 0d | Back-end Dev | 24h | 480 |
| 53 | 1.1.3.2.2.2 | Xây dựng chức năng quản trị quản lý | 3d | 2020-01-20 | 2020-01-22 | 25 | 17d | 0d | Back-end Dev | 24h | 480 |
| 54 | 1.1.3.3 | **Xây dựng bảo mật** | 13d | 2020-01-13 | 2020-01-29 |  | 14d |  |  | 56h | 1,120 |
| 55 | 1.1.3.3.1 | Xây dựng cơ sở dữ liệu | 2d | 2020-01-13 | 2020-01-14 | 27 | 14d | 0d | Back-end Dev | 16h | 320 |
| 56 | 1.1.3.3.2 | **Xây dựng phân quyền** | 2d | 2020-01-28 | 2020-01-29 |  | 16d | 0d |  | 16h | 320 |
| 57 | 1.1.3.3.2.1 | Xây dựng quyền trên cơ sở dữ liệu | 1d | 2020-01-28 | 2020-01-28 | 55 | 17d |  | Back-end Dev | 8h | 160 |
| 58 | 1.1.3.3.2.2 | Xây dựng nhóm quyền trên cơ sở dữ liệu | 1d | 2020-01-29 | 2020-01-29 | 55 | 16d |  | Back-end Dev | 8h | 160 |
| 59 | 1.1.3.3.3 | Xây dựng sao lưu và phục hồi | 3d | 2020-01-23 | 2020-01-27 | 55 | 14d | 0d | Back-end Dev | 24h | 480 |
| 60 | 1.1.4 | **Kiểm thử và khắc phục** | 29d | 2020-01-15 | 2020-02-24 |  | 0d |  |  | 480h | 9,600 |
| 61 | 1.1.4.1 | **Kiểm thử, khắc phục Front-end Site** | 27d | 2020-01-17 | 2020-02-24 |  | 0d |  |  | 240h | 4,800 |
| 62 | 1.1.4.1.1 | **Kiểm thử, khắc phục giao diện** | 27d | 2020-01-17 | 2020-02-24 |  | 0d |  |  | 112h | 2,240 |
| 63 | 1.1.4.1.1.1 | Kiểm thử, khắc phục giao diện trang chủ | 2d | 2020-01-17 | 2020-01-20 | 35 | 25d |  | Front-end Dev; Tester | 24h | 480 |
| 64 | 1.1.4.1.1.2 | Kiểm thử, khắc phục giao diện trang xem phim | 1d | 2020-02-03 | 2020-02-03 | 36 | 15d |  | Front-end Dev; Tester | 16h | 320 |
| 65 | 1.1.4.1.1.3 | Kiểm thử, khắc phục giao diện trang chi tiết phim | 2d | 2020-01-28 | 2020-01-29 | 37 | 18d |  | Front-end Dev; Tester | 32h | 640 |
| 66 | 1.1.4.1.1.4 | Kiểm thử, khắc phục trang tìm kiếm | 1d | 2020-01-24 | 2020-01-27 | 38 | 20d |  | Front-end Dev; Tester | 8h | 160 |
| 67 | 1.1.4.1.1.5 | Kiểm thử, khắc phục tương thích của giao diện | 2d | 2020-02-21 | 2020-02-24 | 39 | 0d |  | Front-end Dev; Tester | 32h | 640 |
| 68 | 1.1.4.1.2 | **Kiểm thử, khắc phục chức năng** | 13d | 2020-01-27 | 2020-02-12 |  | 8d |  |  | 128h | 2,560 |
| 69 | 1.1.4.1.2.1 | Kiểm thử, khắc phục chức năng xem phim | 2d | 2020-01-27 | 2020-01-28 | 41 | 19d |  | Back-end Dev; Tester | 32h | 640 |
| 70 | 1.1.4.1.2.2 | Kiểm thử, khắc phục chức năng đăng nhập | 1d | 2020-02-07 | 2020-02-07 | 43 | 11d |  | Back-end Dev; Tester | 16h | 320 |
| 71 | 1.1.4.1.2.3 | Kiểm thử, khắc phục chức năng bình luận | 1d | 2020-02-12 | 2020-02-12 | 44 | 8d |  | Back-end Dev; Tester | 16h | 320 |
| 72 | 1.1.4.1.2.4 | Kiểm thử, khắc phục chức năng tìm kiếm | 2d | 2020-01-30 | 2020-01-31 | 42 | 16d |  | Back-end Dev; Tester | 32h | 640 |
| 73 | 1.1.4.1.2.5 | Kiểm thử, khắc phục chức năng theo dõi thông tin người dùng | 2d | 2020-02-10 | 2020-02-11 | 45 | 9d |  | Back-end Dev; Tester | 32h | 640 |
| 74 | 1.1.4.2 | **Kiểm thử, khắc phục Back-end Site** | 17d | 2020-01-22 | 2020-02-13 |  | 7d |  |  | 168h | 3,360 |
| 75 | 1.1.4.2.1 | **Kiểm thử, khắc phục giao diện** | 17d | 2020-01-22 | 2020-02-13 |  | 7d |  |  | 120h | 2,400 |
| 76 | 1.1.4.2.1.1 | Kiểm thử, khắc phục giao diện quản trị phim | 2d | 2020-01-22 | 2020-01-23 | 48 | 22d |  | Front-end Dev; Tester | 32h | 640 |
| 77 | 1.1.4.2.1.2 | Kiểm thử, khắc phục giao diện quản trị quản lý | 2d | 2020-01-23 | 2020-01-24 | 49 | 21d |  | Front-end Dev; Tester | 24h | 480 |
| 78 | 1.1.4.2.1.3 | Kiểm thử, khắc phục tương thích của giao diện | 4d | 2020-02-10 | 2020-02-13 | 50 | 7d |  | Front-end Dev; Tester | 64h | 1,280 |

| ID | WBS | Task | Duration | Start | Finish | Predecessors | Total slack | Free slack | Resources | Work | Cost |
| --- | --- | --- | --- | --- | --- | --- | --- | --- | --- | --- | --- |
| 79 | 1.1.4.2.2 | **Kiểm thử, khắc phục chức năng** | 5d | 2020-01-24 | 2020-01-30 |  | 17d |  |  | 48h | 960 |
| 80 | 1.1.4.2.2.1 | Kiểm thử, khắc phục chức năng quản trị phim | 2d | 2020-01-24 | 2020-01-27 | 52 | 20d |  | Back-end Dev; Tester | 24h | 480 |
| 81 | 1.1.4.2.2.2 | Kiểm thử, khắc phục chức năng quản trị quản lý | 2d | 2020-01-29 | 2020-01-30 | 53 | 17d |  | Back-end Dev; Tester | 24h | 480 |
| 82 | 1.1.4.3 | **Kiểm thử, khắc phục bảo mật** | 15d | 2020-01-15 | 2020-02-04 |  | 14d |  |  | 72h | 1,440 |
| 83 | 1.1.4.3.1 | Kiểm thử, khắc phục cơ sở dữ liệu | 1d | 2020-01-15 | 2020-01-15 | 55 | 28d |  | Back-end Dev; Tester | 16h | 320 |
| 84 | 1.1.4.3.2 | Kiểm thử, khắc phục phân quyền | 2d | 2020-01-30 | 2020-01-31 | 56 | 16d |  | Back-end Dev; Tester | 32h | 640 |
| 85 | 1.1.4.3.3 | Kiểm thử, khắc phục sao lưu và phục hồi | 2d | 2020-02-03 | 2020-02-04 | 59 | 14d |  | Back-end Dev; Tester | 24h | 480 |
| 86 | 1.1.5 | **Deploy** | 4d | 2020-02-25 | 2020-02-28 | 90, 60 | 0d |  |  | 32h | 640 |
| 87 | 1.1.5.1 | Cấu hình môi trường deploy | 1d | 2020-02-25 | 2020-02-25 |  | 0d |  | Back-end Dev | 8h | 160 |
| 88 | 1.1.5.2 | Deploy sản phẩm lên môi trường | 1d | 2020-02-26 | 2020-02-26 | 87 | 0d |  | Back-end Dev | 8h | 160 |
| 89 | 1.1.5.3 | Kiểm thử và khắc phục sản phẩm trên môi trường deploy | 2d | 2020-02-27 | 2020-02-28 | 88 | 0d |  | Back-end Dev | 16h | 320 |
| 90 | 1.2 | **Dịch cụ hosting** | 29d | 2020-01-06 | 2020-02-13 | 3 | 7d |  |  | 88h | 2,040 |
| 91 | 1.2.1 | Lấy yêu cầu khách hàng về hosting | 2d | 2020-01-06 | 2020-01-07 | 3 | 7d | 0d | BA | 16h | 400 |
| 92 | 1.2.2 | Chọn hosting và nhận phản hồi từ khách hàng | 4d | 2020-01-08 | 2020-01-13 | 91 | 7d | 0d | BA | 32h | 800 |
| 93 | 1.2.3 | Xác nhận hosting với bên thứ ba | 1d | 2020-01-14 | 2020-01-14 | 92 | 7d | 0d | BA | 8h | 200 |
| 94 | 1.2.4 | Cấu hình hosting | 2d | 2020-02-04 | 2020-02-05 | 93 | 7d | 0d | Back-end Dev | 16h | 320 |
| 95 | 1.2.5 | Kiểm tra và khắc phục cấu hình hosting | 2d | 2020-02-12 | 2020-02-13 | 94 | 7d |  | Back-end Dev | 16h | 320 |
